# Sensor Platform-Project Schedule

How a schedule from MS Project changed from version to version. A marks actual dates.

## Version 1 (saved 2015-03-19)

Note of the change: Restructure Docs dir, Add GUI compare table

| ID | WBS | Task | Duration | Start | Finish | Predecessors | Complete | Total float | Constraint |
| --- | --- | --- | --- | --- | --- | --- | --- | --- | --- |
| 1 | 1 | **Plan** | 106.38d? | 2014-11-10 08:00 A | 2015-02-24 17:00 |  | 91% | 100d |  |
| 2 |  | Teaming up and Meeting with Advisor | 3.33d | 2014-11-10 08:00 A | 2014-11-20 17:00 A |  | 100% |  |  |
| 3 |  | Understanding the project and its requirements | 15.56d | 2014-11-10 08:00 A | 2015-01-07 10:40 |  | 98% | 148.26d | finish no earlier than 2014-11-30 17:00 |
| 4 |  | Meeting with sponsors | 0.33d | 2014-12-04 08:00 A | 2014-12-04 17:00 A |  | 100% |  | start no earlier than 2014-12-04 08:00 |
| 5 |  | Reviewing the existing design and gathering info about the requirements | 8.67d | 2014-12-05 08:00 A | 2015-01-08 17:00 |  | 99% | 147d | finish no earlier than 2015-01-07 17:00 |
| 6 |  | Meeting with sponsors | 0.33d? | 2015-01-08 08:00 A | 2015-01-08 17:00 A |  | 100% |  | start no earlier than 2015-01-08 08:00 |
| 7 |  | Concept Generation and Evaluation | 0.33d? | 2015-01-09 08:00 A | 2015-01-09 17:00 A |  | 100% |  | finish no earlier than 2015-01-11 17:00 |
| 8 |  | Write up the preliminary project proposal | 0.67d | 2015-01-11 08:00 A | 2015-01-13 17:00 A |  | 100% |  | finish no earlier than 2015-01-13 17:00 |
| 9 |  | Review project proposal | 1d | 2015-01-14 08:00 A | 2015-01-16 17:00 A | 8 | 100% |  | finish no earlier than 2015-01-18 17:00 |
| 10 |  | Present Project Proposal | 1h | 2015-02-24 08:00 A | 2015-02-24 09:00 |  |  | 100.33d | finish no earlier than 2015-02-24 17:00 |
| 11 | 1.10 | **Develop project requirement** | 47.38d | 2015-01-08 08:00 A | 2015-02-24 17:00 |  | 57% | 100d |  |
| 12 |  | Develop the general project requirement | 3.67d | 2015-01-08 08:00 A | 2015-01-20 17:00 | 9 | 82% | 3d | finish no earlier than 2015-01-20 17:00 |
| 13 |  | Write up the detail project requirement | 2d | 2015-01-25 08:00 A | 2015-01-28 17:00 | 12 | 33% | 4.76d |  |
| 14 |  | Review project requirement document | 1d | 2015-02-02 08:00 A | 2015-02-03 17:00 | 13 | 13% | 121d |  |
| 15 |  | Gain Sponsor approval of requirements | 0d | 2015-02-24 17:00 | 2015-02-24 17:00 |  |  | 100d | finish no earlier than 2015-02-24 17:00 |
| 16 | 2 | **Design** | 75.33d? | 2015-01-09 08:00 A | 2015-03-25 16:00 |  | 49% | 71.04d |  |
| 17 |  | Determine the necessary functional blocks | 4.33d | 2015-01-09 08:00 A | 2015-01-23 17:00 A |  | 100% |  | finish no earlier than 2015-01-25 17:00 |
| 18 |  | Review the block layout | 0.33d | 2015-01-25 08:00 A | 2015-01-26 17:00 A | 17 | 100% |  |  |
| 19 |  | Determine the design concept of each block: problem to solve and available technology | 1.71d | 2015-02-01 08:00 A | 2015-02-06 17:00 |  | 88% | 118d | finish no earlier than 2015-02-06 17:00 |
| 20 |  | Write the test plan | 2d | 2015-02-04 17:00 A | 2015-02-06 17:00 A |  | 100% |  | finish no earlier than 2015-02-06 17:00 |
| 21 |  | Review the test plan | 0.33d | 2015-02-06 08:00 | 2015-02-07 17:00 |  |  | 0d | finish no earlier than 2015-02-07 17:00 |
| 22 |  | Design the preliminary circuitry | 2.67d | 2015-02-02 08:00 | 2015-02-11 17:00 |  |  | 20d | finish no earlier than 2015-02-11 17:00 |
| 23 |  | Review the circuit design | 1d | 2015-02-12 08:00 | 2015-02-14 17:00 | 22 |  | 19.62d | finish no earlier than 2015-02-14 17:00 |
| 24 |  | Generate the circuitry schematic and PCB layout on Eagle CAD | 1.67d | 2015-02-16 08:00 | 2015-02-20 17:00 | 23 |  | 18d | finish no earlier than 2015-02-20 17:00 |
| 25 |  | Review and revise preliminary design | 0.33d | 2015-02-20 17:00 | 2015-02-21 01:00 | 24 |  | 20.52d |  |
| 26 |  | Finalize the preliminary schematic and PCB design | 2d | 2015-03-11 08:00 | 2015-03-18 17:00 | 25 |  | 2.23d | start no earlier than 2015-03-11 08:00 |
| 27 |  | Review the design with the sponsors | 0.67d? | 2015-03-21 08:00 A | 2015-03-23 17:00 | 26 | 78% | 73d |  |
| 28 |  | Specify the component for the design | 7d? | 2015-02-06 08:00 A | 2015-02-27 17:00 |  | 46% | 97d | finish no earlier than 2015-02-27 17:00 |
| 29 |  | Place order for the components | 1d? | 2015-03-23 08:00 A | 2015-03-25 16:00 |  | 47% | 71.04d | finish no earlier than 2015-03-02 17:00 |
| 30 | 3 | **Build** | 101.38d? | 2015-01-15 08:00 | 2015-04-26 17:00 |  |  | 39d |  |
| 31 | 3.1 | **User Interface** | 28.38d? | 2015-03-19 08:00 | 2015-04-16 17:00 |  |  | 9d |  |
| 32 |  | Finalize configuration parameters | 6.38d? | 2015-03-19 08:00 | 2015-03-25 17:00 |  |  | 71d | start no earlier than 2015-03-19 08:00 |
| 33 |  | Load sensor type definitions from file | 4.38d? | 2015-03-25 08:00 | 2015-03-29 17:00 |  |  | 67d | finish no earlier than 2015-03-29 17:00 |
| 34 | 3.1.3 | **CSV** | 7.38d? | 2015-03-30 08:00 | 2015-04-06 17:00 |  |  | 59d |  |
| 35 |  | write sensor -> CSV encoding | 5.38d? | 2015-03-30 08:00 | 2015-04-04 17:00 |  |  | 61d | finish no earlier than 2015-04-04 17:00 |
| 36 |  | write CSV -> sensor decoding | 3.38d? | 2015-04-03 08:00 | 2015-04-06 17:00 |  |  | 59d | start no earlier than 2015-04-03 08:00 |
| 37 | 3.1.4 | **Add filesystem functions** | 19.38d | 2015-03-28 08:00 | 2015-04-16 17:00 |  |  |  |  |
| 38 |  | Save configurator | 3.38d? | 2015-04-07 08:00 | 2015-04-10 17:00 |  |  | 55d | finish no earlier than 2015-04-10 17:00 |
| 39 |  | Load configurator | 3.38d? | 2015-04-07 08:00 | 2015-04-10 17:00 |  |  | 55d | finish no earlier than 2015-04-10 17:00 |
| 40 |  | Add serial functionality | 5.38d? | 2015-04-11 08:00 | 2015-04-16 17:00 |  |  | 49d | start no earlier than 2015-04-11 08:00 |
| 41 | 3.2 | **Hack the serial IAP driver** | 10.38d? | 2015-04-16 08:00 | 2015-04-26 17:00 |  |  | 39d |  |
| 42 |  | Add a menu option for downloading a configuration | 2.38d? | 2015-04-16 08:00 | 2015-04-18 17:00 |  |  | 47d | finish no earlier than 2015-04-18 17:00 |
| 43 |  | Implement functionality of downloading the configurator | 2.38d? | 2015-04-18 08:00 | 2015-04-20 17:00 |  |  | 45d | finish no earlier than 2015-04-20 17:00 |
| 44 |  | Parse the configurator into an array of sensor structs | 2.38d? | 2015-04-21 08:00 | 2015-04-23 17:00 |  |  | 42d | finish no earlier than 2015-04-23 17:00 |
| 45 |  | Save to flash | 2.38d? | 2015-04-24 08:00 | 2015-04-26 17:00 |  |  | 39d | start no earlier than 2015-04-24 08:00 |
| 46 |  | Program the MCU | 20.33d? | 2015-01-15 08:00 | 2015-04-07 17:00 |  |  | 57d | finish no earlier than 2015-04-07 17:00 |
| 47 |  | Send the boards to fab | 4d? | 2015-03-23 08:00 | 2015-04-07 17:00 |  |  | 58d | finish no earlier than 2015-04-07 17:00 |
| 48 |  | Working on the poster | 60.38d? | 2015-04-01 08:00 | 2015-05-31 17:00 |  |  | 4d | finish no earlier than 2015-05-31 17:00 |
| 49 | 5 | **Test** | 38.38d? | 2015-04-08 08:00 | 2015-05-16 17:00 |  |  | 19d |  |
| 50 |  | Debug the codes | 5d? | 2015-04-08 08:00 | 2015-04-22 17:00 |  |  | 43d | finish no earlier than 2015-04-22 17:00 |
| 51 |  | Build the system on the PCB | 1.67d | 2015-04-10 08:00 | 2015-04-16 17:00 |  |  | 49d | finish no earlier than 2015-04-16 17:00 |
| 52 |  | Test the hardware | 4.56d | 2015-04-10 08:00 | 2015-04-24 17:00 |  |  | 41d | start no earlier than 2015-04-10 08:00 |
| 53 |  | Test the Software | 4.33d? | 2015-04-10 08:00 | 2015-04-24 17:00 |  |  | 41d | finish no earlier than 2015-04-24 17:00 |
| 54 |  | Test the GUI | 1.67d? | 2015-04-27 08:00 | 2015-04-29 17:00 |  |  | 36d | finish no earlier than 2015-04-29 17:00 |
| 55 |  | Integration test | 1.67d? | 2015-04-30 08:00 | 2015-05-04 17:00 |  |  | 31d | finish no earlier than 2015-05-04 17:00 |
| 56 |  | Functionality test | 1.67d? | 2015-05-05 08:00 | 2015-05-07 17:00 |  |  | 28d | finish no earlier than 2015-05-07 17:00 |
| 57 |  | Design and build the device closure (box) | 6.33d | 2015-04-17 08:00 | 2015-05-10 17:00 |  |  | 25d | finish no earlier than 2015-05-10 17:00 |
| 58 |  | Perform the final test | 17.96d | 2015-04-28 09:00 | 2015-05-16 17:00 |  |  | 8d | finish no earlier than 2015-05-16 17:00 |
| 59 |  | Write the operation manual | 5.46d | 2014-11-09 16:00 | 2014-11-15 03:00 |  |  | 201.58d |  |
| 60 |  | Review the operation manual | 3.17d | 2015-05-13 13:00 | 2015-05-26 17:00 |  |  | 9d | finish no earlier than 2015-05-26 17:00 |
| 61 | 8 | **Present** | 26.38d | 2015-05-09 08:00 | 2015-06-04 17:00 |  |  |  |  |
| 62 |  | Complete the presentation documents (slides) | 5.67d | 2015-05-09 08:00 | 2015-05-29 17:00 |  |  | 0d | finish no earlier than 2015-05-29 17:00 |
| 63 |  | Review the presentation documents | 0.33d | 2015-05-29 17:00 | 2015-06-01 17:00 | 62 |  | 0d | finish no earlier than 2015-05-13 17:00 |
| 64 |  | Final presentation of the system | 1.33d | 2015-06-01 17:00 | 2015-06-04 17:00 | 63 |  | 0d | finish no earlier than 2015-06-04 17:00 |
| 65 | 9 | **WPR** | 203.01d | 2014-11-13 16:00 A | 2015-06-04 16:15 |  | 37% | 0.03d |  |
| 66 |  | WPR 1 | 15min | 2014-11-13 16:00 A | 2014-11-13 16:15 A |  | 100% |  | start no earlier than 2014-11-13 16:00 |
| 67 |  | WPR 2 | 15min | 2014-11-20 16:00 A | 2014-11-20 16:15 A |  | 100% |  | start no earlier than 2014-11-20 16:00 |
| 68 |  | WPR 3 | 15min | 2014-11-27 16:00 A | 2014-11-27 16:15 A |  | 100% |  | start no earlier than 2014-11-27 16:00 |
| 69 |  | WPR 4 | 15min | 2014-12-04 16:00 A | 2014-12-04 16:15 A |  | 100% |  | start no earlier than 2014-12-04 16:00 |
| 70 |  | WPR 5 | 15min | 2014-12-11 16:00 A | 2014-12-11 16:15 A |  | 100% |  | start no earlier than 2014-12-11 16:00 |

| ID | Task | Duration | Start | Finish | Complete | Total float | Constraint |
| --- | --- | --- | --- | --- | --- | --- | --- |
| 71 | WPR 6 | 15min | 2014-12-18 16:00 A | 2014-12-18 16:15 A | 100% |  | start no earlier than 2014-12-18 16:00 |
| 72 | WPR 7 | 15min | 2014-12-25 16:00 A | 2014-12-25 16:15 A | 100% |  | start no earlier than 2014-12-25 16:00 |
| 73 | WPR 8 | 15min | 2015-01-01 16:00 A | 2015-01-01 16:15 A | 100% |  | start no earlier than 2015-01-01 16:00 |
| 74 | WPR 9 | 15min | 2015-01-08 16:00 A | 2015-01-08 16:15 A | 100% |  | start no earlier than 2015-01-08 16:00 |
| 75 | WPR 10 | 15min | 2015-01-15 16:00 A | 2015-01-15 16:15 A | 100% |  | start no earlier than 2015-01-15 16:00 |
| 76 | WPR 11 | 15min | 2015-01-22 16:00 A | 2015-01-22 16:15 A | 100% |  | start no earlier than 2015-01-22 16:00 |
| 77 | WPR 12 | 15min | 2015-01-29 16:00 | 2015-01-29 16:15 |  | 126.03d | start no earlier than 2015-01-29 16:00 |
| 78 | WPR 13 | 15min | 2015-02-05 16:00 | 2015-02-05 16:15 |  | 119.03d | start no earlier than 2015-02-05 16:00 |
| 79 | WPR 14 | 15min | 2015-02-12 16:00 | 2015-02-12 16:15 |  | 112.03d | start no earlier than 2015-02-12 16:00 |
| 80 | WPR 15 | 15min | 2015-02-19 16:00 | 2015-02-19 16:15 |  | 105.03d | start no earlier than 2015-02-19 16:00 |
| 81 | WPR 16 | 15min | 2015-02-26 16:00 | 2015-02-26 16:15 |  | 98.03d | start no earlier than 2015-02-26 16:00 |
| 82 | WPR 17 | 15min | 2015-03-05 16:00 | 2015-03-05 16:15 |  | 91.03d | start no earlier than 2015-03-05 16:00 |
| 83 | WPR 18 | 15min | 2015-03-12 16:00 | 2015-03-12 16:15 |  | 84.03d | start no earlier than 2015-03-12 16:00 |
| 84 | WPR 19 | 15min | 2015-03-19 16:00 | 2015-03-19 16:15 |  | 77.03d | start no earlier than 2015-03-19 16:00 |
| 85 | WPR 20 | 15min | 2015-03-26 16:00 | 2015-03-26 16:15 |  | 70.03d | start no earlier than 2015-03-26 16:00 |
| 86 | WPR 21 | 15min | 2015-04-02 16:00 | 2015-04-02 16:15 |  | 63.03d | start no earlier than 2015-04-02 16:00 |
| 87 | WPR 22 | 15min | 2015-04-09 16:00 | 2015-04-09 16:15 |  | 56.03d | start no earlier than 2015-04-09 16:00 |
| 88 | WPR 23 | 15min | 2015-04-16 16:00 | 2015-04-16 16:15 |  | 49.03d | start no earlier than 2015-04-16 16:00 |
| 89 | WPR 24 | 15min | 2015-04-23 16:00 | 2015-04-23 16:15 |  | 42.03d | start no earlier than 2015-04-23 16:00 |
| 90 | WPR 25 | 15min | 2015-04-30 16:00 | 2015-04-30 16:15 |  | 35.03d | start no earlier than 2015-04-30 16:00 |
| 91 | WPR 26 | 15min | 2015-05-07 16:00 | 2015-05-07 16:15 |  | 28.03d | start no earlier than 2015-05-07 16:00 |
| 92 | WPR 27 | 15min | 2015-05-14 16:00 | 2015-05-14 16:15 |  | 21.03d | start no earlier than 2015-05-14 16:00 |
| 93 | WPR 28 | 15min | 2015-05-21 16:00 | 2015-05-21 16:15 |  | 14.03d | start no earlier than 2015-05-21 16:00 |
| 94 | WPR 29 | 15min | 2015-05-28 16:00 | 2015-05-28 16:15 |  | 7.03d | start no earlier than 2015-05-28 16:00 |
| 95 | WPR 30 | 15min | 2015-06-04 16:00 | 2015-06-04 16:15 |  | 0.03d | start no earlier than 2015-06-04 16:00 |

## Version 2 (saved 2015-04-02)

Note of the change: Work on config parsing

Last finish stays 2015-06-04. Complete tasks 20 → 32.

Removed: 41 Hack the serial IAP driver; 42 Add a menu option for downloading a configuration; 43 Implement functionality of downloading the configurator; 44 Parse the configurator into an array of sensor structs; 45 Save to flash

Changed:

| ID | Task | Start | Finish | Duration | Complete | Total float | Other |
| --- | --- | --- | --- | --- | --- | --- | --- |
| 16 | **Circuit Design** |  |  |  |  |  | was named Design |
| 30 | **Build User Interface** | 2015-01-15 08:00 → 2015-03-19 08:00 A (+63d) | 2015-04-26 17:00 → 2015-04-17 08:00 (-9d) | 101.38d? → 29d | 0% → 32% | 39d → 48.38d | was named Build |
| 31 | **User Interface** | 2015-03-19 08:00 A | 2015-04-16 17:00 → 2015-04-17 08:00 (+1d) | 28.38d? → 29d | 0% → 32% | 9d → 48.38d |  |
| 32 | Finalize configuration parameters | 2015-03-19 08:00 A | 2015-03-25 17:00 → 2015-03-21 08:00 A (-4d) | 6.38d? → 2d | 0% → 100% | 71d → none |  |
| 33 | Load sensor type definitions from file | 2015-03-25 08:00 A | 2015-03-29 17:00 → 2015-03-30 08:00 (+1d) | 4.38d? → 5d | 0% → 70% | 67d → 66.38d |  |
| 34 | **CSV** | 2015-03-30 08:00 → 2015-03-21 17:00 (-9d) | 2015-04-06 17:00 → 2015-04-17 08:00 (+11d) | 7.38d? → 26.62d |  | 59d → 48.38d |  |
| 35 | write (sensor -> CSV) encoding | 2015-03-30 08:00 → 2015-03-21 17:00 (-9d) |  | 5.38d? → 14d |  |  | was named write sensor -> CSV encoding |
| 36 | write (CSV -> sensor) decoding |  | 2015-04-06 17:00 → 2015-04-17 08:00 (+11d) | 3.38d? → 14d |  | 59d → 48.38d | was named write CSV -> sensor decoding |
| 37 | **Add filesystem functions** |  |  |  | 0% → 100% |  |  |
| 38 | Save configurator | 2015-04-07 08:00 A | 2015-04-10 17:00 A | 3.38d? → 3d | 0% → 100% | 55d → none |  |
| 39 | Load configurator | 2015-04-07 08:00 A | 2015-04-10 17:00 A | 3.38d? → 3d | 0% → 100% | 55d → none |  |
| 40 | Add serial functionality | 2015-04-11 08:00 A | 2015-04-16 17:00 → 2015-04-15 08:00 (-1d) | 5.38d? → 4d | 0% → 67% | 49d → 50.38d |  |
| 41 | Program the MCU | 2015-01-15 08:00 → 2014-11-09 16:00 (-67d) | 2015-04-07 17:00 → 2014-11-22 16:00 (-136d) | 20.33d? → 4d? |  | 57d → 191.67d | constraint finish no earlier than 2015-04-07 17:00 → none |
| 60 | **WPR** |  |  |  | 37% → 67% |  |  |
| 72 | WPR 12 | 2015-01-29 16:00 A | 2015-01-29 16:15 A |  | 0% → 100% | 126.03d → none |  |
| 73 | WPR 13 | 2015-02-05 16:00 A | 2015-02-05 16:15 A |  | 0% → 100% | 119.03d → none |  |
| 74 | WPR 14 | 2015-02-12 16:00 A | 2015-02-12 16:15 A |  | 0% → 100% | 112.03d → none |  |
| 75 | WPR 15 | 2015-02-19 16:00 A | 2015-02-19 16:15 A |  | 0% → 100% | 105.03d → none |  |
| 76 | WPR 16 | 2015-02-26 16:00 A | 2015-02-26 16:15 A |  | 0% → 100% | 98.03d → none |  |
| 77 | WPR 17 | 2015-03-05 16:00 A | 2015-03-05 16:15 A |  | 0% → 100% | 91.03d → none |  |
| 78 | WPR 18 | 2015-03-12 16:00 A | 2015-03-12 16:15 A |  | 0% → 100% | 84.03d → none |  |
| 79 | WPR 19 | 2015-03-19 16:00 A | 2015-03-19 16:15 A |  | 0% → 100% | 77.03d → none |  |
| 80 | WPR 20 | 2015-03-26 16:00 A | 2015-03-26 16:15 A |  | 0% → 100% | 70.03d → none |  |

## Version 3 (saved 2015-04-17)

Note of the change: Project Schedule Revision

Last finish 2015-06-04 → 2015-06-10 (+6d). Complete tasks 32 → 53.

Added:

| ID | Task | Duration | Start | Finish | Predecessors | Constraint |
| --- | --- | --- | --- | --- | --- | --- |
| 46 | Inspect the boards and verify the connections | 1d | 2015-04-03 17:00 A | 2015-04-04 17:00 A |  | finish no earlier than 2015-04-04 17:00 |
| 47 | Populate the boards | 20d | 2015-04-04 17:00 A | 2015-04-24 17:00 |  | finish no earlier than 2015-04-24 17:00 |
| 48 | Verify soldered connections | 2d | 2015-04-13 08:00 A | 2015-04-15 08:00 |  | start no earlier than 2015-04-13 08:00 |
| 49 | Verify power levels, clock signal presence and frequency | 4d | 2015-04-15 08:00 | 2015-04-19 08:00 | 48 |  |
| 50 | Upload "Hello World" program on the main board | 3d | 2015-04-17 08:00 | 2015-04-20 08:00 |  | start no earlier than 2015-04-17 08:00 |
| 51 | Upload real firmware on the main board | 4d | 2015-04-21 08:00 | 2015-04-25 08:00 |  | start no earlier than 2015-04-21 08:00 |
| 52 | Connect sensor boards to "known good" device such as Arduino and verify readings | 3d | 2015-04-22 08:00 | 2015-04-25 08:00 |  | start no earlier than 2015-04-22 08:00 |
| 54 | Interface main board and ADC sensor | 4d | 2015-04-26 08:00 | 2015-04-30 08:00 |  | start no earlier than 2015-04-26 08:00 |
| 55 | Interface I2C sensor board with main board | 4d | 2015-04-26 08:00 | 2015-04-30 08:00 |  | start no earlier than 2015-04-26 08:00 |
| 57 | Software full assembly test | 7d | 2015-05-01 08:00 | 2015-05-08 08:00 |  | start no earlier than 2015-05-01 08:00 |
| 59 | Alfa testing | 3d | 2015-05-18 08:00 | 2015-05-21 08:00 |  | start no earlier than 2015-05-18 08:00 |

Removed: 45 Debug the codes; 46 Build the system on the PCB; 48 Test the Software; 49 Test the GUI

Changed:

| ID | Task | Start | Finish | Duration | Complete | Total float | Predecessors | Other |
| --- | --- | --- | --- | --- | --- | --- | --- | --- |
| 1 | **Plan** |  | 2015-02-24 17:00 A | 106.38d? → 106.38d | 91% → 100% | 100d → none |  |  |
| 2 | Teaming up and Meeting with Advisor |  | 2014-11-20 17:00 A → 2014-11-21 09:00 A (+1d) | 3.33d → 4d |  |  |  |  |
| 3 | Understanding the project and its requirements |  | 2015-01-07 10:40 → 2015-01-08 14:20 A (+1d) | 15.56d → 16d | 98% → 100% | 148.26d → none |  |  |
| 4 | Meeting with sponsors |  | 2014-12-04 17:00 A → 2014-12-05 09:00 A (+1d) | 0.33d → 1d |  |  |  |  |
| 5 | Reviewing the existing design and gathering info about the requirements |  | 2015-01-08 17:00 → 2015-01-09 01:00 A (+1d) | 8.67d → 9d | 99% → 100% | 147d → none |  |  |
| 6 | Meeting with sponsors |  | 2015-01-08 17:00 A → 2015-01-09 09:00 A (+1d) | 0.33d? → 1d |  |  |  |  |
| 7 | Concept Generation and Evaluation |  | 2015-01-09 17:00 A → 2015-01-11 17:00 A (+2d) | 0.33d? → 1d |  |  |  |  |
| 8 | Write up the preliminary project proposal |  | 2015-01-13 17:00 A → 2015-01-14 17:00 A (+1d) | 0.67d → 1d |  |  |  |  |
| 10 | Present Project Proposal |  | 2015-02-24 09:00 A |  | 0% → 100% | 100.33d → none |  |  |
| 11 | **Develop project requirement** |  | 2015-02-24 17:00 A |  | 57% → 100% | 100d → none |  |  |
| 12 | Develop the general project requirement |  | 2015-01-20 17:00 → 2015-01-21 01:00 A (+1d) | 3.67d → 4d | 82% → 100% | 3d → none |  |  |
| 13 | Write up the detail project requirement |  | 2015-01-28 17:00 A |  | 33% → 100% | 4.76d → none |  |  |
| 14 | Review project requirement document |  | 2015-02-03 17:00 A |  | 13% → 100% | 121d → none |  |  |
| 15 | Gain Sponsor approval of requirements | 2015-02-24 17:00 → 2015-02-23 17:00 A (-1d) | 2015-02-24 17:00 A | 0d → 1d | 0% → 100% | 100d → none |  |  |
| 16 | **Circuit Design** |  |  | 75.33d? → 75.33d | 49% → 99% | 71.04d → 77.04d |  |  |
| 17 | Determine the necessary functional blocks |  | 2015-01-23 17:00 A → 2015-01-25 17:00 A (+2d) | 4.33d → 5d |  |  |  |  |
| 18 | Review the block layout |  | 2015-01-26 17:00 A → 2015-01-28 17:00 A (+2d) | 0.33d → 1d |  |  |  |  |
| 19 | Determine the design concept of each block: problem to solve and available technology |  | 2015-02-06 17:00 → 2015-02-09 16:00 A (+3d) | 1.71d → 2d | 88% → 100% | 118d → none |  |  |
| 21 | Review the test plan | 2015-02-06 08:00 A | 2015-02-07 17:00 → 2015-02-10 17:00 (+3d) | 0.33d → 1d | 0% → 95% | 0d → 120d |  |  |
| 22 | Design the preliminary circuitry | 2015-02-02 08:00 → 2015-01-30 08:00 A (-3d) | 2015-02-11 17:00 A | 2.67d → 3d | 0% → 100% | 20d → none |  |  |
| 23 | Review the circuit design | 2015-02-12 08:00 A | 2015-02-14 17:00 A |  | 0% → 100% | 19.62d → none |  |  |
| 24 | Generate the circuitry schematic and PCB layout on Eagle CAD | 2015-02-16 08:00 A | 2015-02-20 17:00 → 2015-02-23 17:00 A (+3d) | 1.67d → 2d | 0% → 100% | 18d → none |  |  |
| 25 | Review and revise preliminary design | 2015-02-20 17:00 A | 2015-02-21 01:00 → 2015-02-24 17:00 A (+3d) | 0.33d → 1d | 0% → 100% | 20.52d → none |  |  |
| 26 | Finalize the preliminary schematic and PCB design | 2015-03-11 08:00 A | 2015-03-18 17:00 A |  | 0% → 100% | 2.23d → none |  |  |
| 27 | Review the design with the sponsors |  | 2015-03-23 17:00 → 2015-03-24 17:00 A (+1d) | 0.67d? → 1d | 78% → 100% | 73d → none |  |  |
| 28 | Specify the component for the design |  | 2015-02-27 17:00 A | 7d? → 7d | 46% → 100% | 97d → none |  |  |
| 29 | Place order for the components |  | 2015-03-25 16:00 A | 1d? → 1d | 47% → 100% | 71.04d → none |  |  |
| 30 | **Build User Interface** |  |  |  | 32% → 85% | 48.38d → 54.38d |  |  |
| 31 | **User Interface** |  |  |  | 32% → 85% | 48.38d → 54.38d |  |  |
| 34 | **CSV** | 2015-03-21 17:00 A |  |  | 0% → 85% | 48.38d → 54.38d |  |  |
| 35 | write (sensor -> CSV) encoding | 2015-03-21 17:00 A | 2015-04-04 17:00 A |  | 0% → 100% | 61d → none |  |  |
| 36 | write (CSV -> sensor) decoding | 2015-04-03 08:00 A |  |  | 0% → 70% | 48.38d → 54.38d |  |  |
| 40 | Add serial functionality |  |  |  | 67% → 70% | 50.38d → 56.38d |  |  |
| 41 | Write the firmware | 2014-11-09 16:00 A |  | 4d? → 4d | 0% → 90% | 191.67d → 200.04d |  | was named Program the MCU |
| 42 | Send the boards to fab | 2015-03-23 08:00 A | 2015-04-07 17:00 → 2015-05-18 17:00 A (+41d) | 4d? → 14d | 0% → 100% | 58d → none |  | constraint finish no earlier than 2015-04-07 17:00 → start no earlier than 2015-03-23 08:00 |
| 43 | Working on the poster | 2015-04-01 08:00 → 2015-04-19 17:00 (+18d) | 2015-05-31 17:00 → 2015-06-06 17:00 (+6d) | 60.38d? → 48d |  |  |  | constraint finish no earlier than 2015-05-31 17:00 → finish no earlier than 2015-06-06 17:00 |
| 44 | **Test** | 2015-04-08 08:00 → 2015-04-03 17:00 A (-5d) | 2015-05-16 17:00 → 2015-06-02 01:00 (+17d) | 38.38d? → 59.33d | 0% → 11% | 19d → 8.67d |  |  |
| 45 | **Test the hardware** | 2015-04-10 08:00 → 2015-04-03 17:00 A (-7d) | 2015-04-24 17:00 → 2015-04-25 08:00 (+1d) | 4.56d → 21.62d | 0% → 21% | 41d → 46.38d |  | constraint start no earlier than 2015-04-10 08:00 → none |
| 53 | **Integration test** | 2015-04-30 08:00 → 2015-04-26 08:00 (-4d) | 2015-05-04 17:00 → 2015-04-30 08:00 (-4d) | 1.67d? → 4d |  | 31d → 41.38d |  | constraint finish no earlier than 2015-05-04 17:00 → none |
| 56 | Hardware full assembly test | 2015-05-05 08:00 → 2015-05-01 08:00 (-4d) | 2015-05-07 17:00 → 2015-05-08 08:00 (+1d) | 1.67d? → 7d |  | 28d → 33.38d |  | was named Functionality test; constraint finish no earlier than 2015-05-07 17:00 → start no earlier than 2015-05-01 08:00 |
| 58 | Design and build the device closure (box) | 2015-04-17 08:00 → 2015-05-11 08:00 (+24d) | 2015-05-10 17:00 → 2015-05-27 17:00 (+17d) | 6.33d → 5d |  | 25d → 14d |  | constraint finish no earlier than 2015-05-10 17:00 → start no earlier than 2015-05-11 08:00 |
| 60 | Perform the acceptance test | 2015-04-28 09:00 → 2015-05-21 08:00 (+23d) | 2015-05-16 17:00 → 2015-06-02 01:00 (+17d) | 17.96d → 3d |  | 8d → 8.67d | none → 59 | was named Perform the final test; constraint finish no earlier than 2015-05-16 17:00 → finish no earlier than 2015-05-23 17:00 |
| 61 | Write the operation manual |  | 2014-11-15 03:00 → 2014-11-15 16:00 | 5.46d → 6d |  | 201.58d → 207.04d |  |  |
| 62 | Review the operation manual | 2015-05-13 13:00 → 2015-05-14 08:00 (+1d) |  | 3.17d → 3d |  | 9d → 15d |  |  |
| 64 | Complete the presentation documents (slides) | 2015-05-09 08:00 → 2015-05-08 08:00 (-1d) |  | 5.67d → 6d |  |  |  |  |
| 65 | Review the presentation documents | 2015-05-29 17:00 A | 2015-06-01 17:00 → 2015-06-03 17:00 (+2d) | 0.33d → 1d |  |  |  |  |
| 66 | Final presentation of the system | 2015-06-01 17:00 → 2015-06-03 17:00 (+2d) | 2015-06-04 17:00 → 2015-06-10 17:00 (+6d) | 1.33d → 2d |  |  |  |  |
| 67 | **WPR** |  |  |  | 67% → 73% | 0.03d → 6.03d |  |  |
| 88 | WPR 21 | 2015-04-02 16:00 A | 2015-04-02 16:15 A |  | 0% → 100% | 63.03d → none |  |  |
| 89 | WPR 22 | 2015-04-09 16:00 A | 2015-04-09 16:15 A |  | 0% → 100% | 56.03d → none |  |  |
